# 32УП

How a schedule from ProjectLibre changed from version to version. A marks actual dates.

## Version 1 (saved 2025-06-14)

Note of the change: up11 point 11 dot 1

| ID | WBS | Task | Duration | Start | Finish | Predecessors | Constraint |
| --- | --- | --- | --- | --- | --- | --- | --- |
| 1 | 1 | **Проєкт** | 88d | 2025-03-10 | 2025-07-10 |  |  |
| 2 |  | Закриття проєкту | 0d | 2025-07-10 | 2025-07-10 | 5 | finish no later than 2025-08-04 |
| 3 | 1.2 | **Запуск і супровід** | 6d | 2025-07-02 | 2025-07-10 |  | finish no later than 2025-08-01 |
| 5 |  | Валідація та приймання системи замовником | 1d | 2025-07-09 | 2025-07-10 | 6 |  |
| 6 |  | Перевірка якості та усунення помилок | 3d | 2025-07-04 | 2025-07-09 | 8 |  |
| 7 |  | Підготовка платформи | 1d | 2025-07-02 | 2025-07-03 | 9SS |  |
| 8 |  | Розгортання системи та наповнення контентом | 1d | 2025-07-03 | 2025-07-04 | 7 |  |
| 9 |  | Створення пакета передачі | 2d | 2025-07-02 | 2025-07-04 | 14 |  |
| 10 | 1.3 | **Розробка** | 60d | 2025-04-09 | 2025-07-02 |  | finish no later than 2025-07-28 |
| 11 |  | Інтеграція | 1d | 2025-06-26 | 2025-06-27 | 13SS+3d |  |
| 12 |  | Тестування | 14d | 2025-06-03 | 2025-06-23 | 17FF, 15FS-10d |  |
| 13 |  | Доробка коду, виправлення помилок | 7d | 2025-06-23 | 2025-07-02 | 12 |  |
| 14 |  | Завершення розробки | 0d | 2025-07-02 | 2025-07-02 | 13 |  |
| 15 |  | Back-end розробка | 46d | 2025-04-14 | 2025-06-17 | 16 |  |
| 16 |  | Розробка бази даних | 3d | 2025-04-09 | 2025-04-14 | 17SS |  |
| 17 |  | Front-end розробка | 32d | 2025-04-09 | 2025-05-23 | 19 | start no earlier than 2025-04-07 |
| 18 | 1.4 | **Проєктування** | 7d | 2025-03-31 | 2025-04-09 |  | finish no later than 2025-05-26 |
| 19 |  | Завершення проєктування | 0d | 2025-04-09 | 2025-04-09 | 20, 21, 22 |  |
| 20 |  | Розробка дизайну сторінок за затвердженим концептом | 7d | 2025-03-31 | 2025-04-09 | 29 |  |
| 21 |  | Проєктування архітектури системи | 3d | 2025-03-31 | 2025-04-03 | 20SS |  |
| 22 |  | Проєктування БД | 3d | 2025-03-31 | 2025-04-03 | 21SS |  |
| 23 | 1.5 | **Аналіз вимог** | 15d | 2025-03-10 | 2025-03-31 |  | start no earlier than 2025-03-03 |
| 24 |  | Аналіз предметної області та опитування замовника | 5d | 2025-03-10 | 2025-03-17 |  | start no earlier than 2025-03-10 |
| 25 |  | Розробка й затвердження концепту дизайну | 2d | 2025-03-17 | 2025-03-19 | 24 |  |
| 26 |  | Специфікація вимог | 6d | 2025-03-19 | 2025-03-27 | 25 |  |
| 27 |  | Планування проєкту | 3d | 2025-03-19 | 2025-03-24 | 26SS |  |
| 28 |  | Затвердження специфікації вимог і плану управління проєктом | 2d | 2025-03-27 | 2025-03-31 | 26, 27 |  |
| 29 |  | Завершення аналізу вимог | 0d | 2025-03-31 | 2025-03-31 | 28 |  |

## Version 2 (saved 2025-06-16)

Note of the change: up8 done

Last finish stays 2025-07-10.

Changed:

| ID | Task | Other |
| --- | --- | --- |
| 6 | Перевірка якості та усунення помилок | resources QA engineer; Junior back-end developer [80%]; Senior back-end developer [70%] → QA engineer; Junior back-end developer [80%]; Senior back-end developer [70%]; Чай [300%]; Вода [500%] |
| 15 | Back-end розробка | resources Senior back-end developer; Junior back-end developer; Middle back-end developer [70%]; QA engineer [30%] → Senior back-end developer; Junior back-end developer; Middle back-end developer [70%]; QA engineer [30%]; Сік [400%]; Вода [300%]; Булочка [800%] |
| 20 | Розробка дизайну сторінок за затвердженим концептом | resources Дизайнер; Middle front-end developer [10%]; Аналітик [50%] → Дизайнер; Middle front-end developer [10%]; Аналітик [50%]; Булочка [200%]; Сік [1200%] |
| 26 | Специфікація вимог | resources Менеджер проєкту [75%]; Аналітик; QA engineer [30%]; Junior back-end developer [30%] → Менеджер проєкту [75%]; Аналітик; QA engineer [30%]; Junior back-end developer [30%]; Чай [500%]; Вода [200%]; Булочка [300%]; Сік [200%] |
