# 32УП

How a schedule from ProjectLibre changed from version to version. A marks actual dates.

## Version 1 (saved 2025-06-10)

Note of the change: Click to see changes

| ID | WBS | Task | Duration | Start | Finish | Predecessors | Constraint |
| --- | --- | --- | --- | --- | --- | --- | --- |
| 1 | 1 | **Проєкт** | 86d | 2025-03-03 | 2025-06-30 |  |  |
| 2 |  | Закриття проєкту | 0d | 2025-06-30 | 2025-06-30 | 3 | finish no later than 2025-08-04 |
| 3 | 1.2 | **Запуск і супровід** | 8d | 2025-06-19 | 2025-06-30 | 9FS+3d | finish no later than 2025-08-01 |
| 4 |  | Валідація та приймання системи замовником | 1d | 2025-06-30 | 2025-06-30 | 5 |  |
| 5 |  | Перевірка якості та усунення помилок | 3d | 2025-06-25 | 2025-06-27 | 7 |  |
| 6 |  | Підготовка платформи | 1d | 2025-06-23 | 2025-06-23 | 8 |  |
| 7 |  | Розгортання системи та наповнення контентом | 1d | 2025-06-24 | 2025-06-24 | 6 |  |
| 8 |  | Створення пакета передачі | 2d | 2025-06-19 | 2025-06-20 |  |  |
| 9 | 1.3 | **Розробка** | 56d | 2025-03-28 | 2025-06-13 | 17FS+1d | finish no later than 2025-07-28 |
| 10 |  | Інтеграція | 3d | 2025-03-28 | 2025-04-01 |  |  |
| 11 |  | Тестування | 14d | 2025-05-16 | 2025-06-04 | 14FF, 15, 16FS+3d |  |
| 12 |  | Доробка коду, виправлення помилок | 7d | 2025-06-05 | 2025-06-13 | 11 |  |
| 13 |  | Завершення розробки | 0d | 2025-06-13 | 2025-06-13 | 12 |  |
| 14 |  | Back-end розробка | 46d | 2025-03-28 | 2025-05-30 | 15SS |  |
| 15 |  | Розробка бази даних | 3d | 2025-03-28 | 2025-04-01 | 16SS |  |
| 16 |  | Front-end розробка | 32d | 2025-03-28 | 2025-05-12 |  |  |
| 17 | 1.4 | **Проєктування** | 7d | 2025-03-18 | 2025-03-26 | 22FS+1d | finish no later than 2025-05-26 |
| 18 |  | Завершення проєктування | 0d | 2025-03-26 | 2025-03-26 | 21, 20, 19 |  |
| 19 |  | Розробка дизайну сторінок за затвердженим концептом | 7d | 2025-03-18 | 2025-03-26 |  |  |
| 20 |  | Проєктування архітектури системи | 3d | 2025-03-18 | 2025-03-20 | 19SS |  |
| 21 |  | Проєктування БД | 3d | 2025-03-18 | 2025-03-20 | 20SS |  |
| 22 | 1.5 | **Аналіз вимог** | 10d | 2025-03-03 | 2025-03-14 |  |  |
| 23 |  | Аналіз предметної області та опитування замовника | 5d | 2025-03-03 | 2025-03-07 |  |  |
| 24 |  | Розробка й затвердження концепту дизайну | 2d | 2025-03-03 | 2025-03-04 | 23SS |  |
| 25 |  | Специфікація вимог | 6d | 2025-03-05 | 2025-03-12 | 24 |  |
| 26 |  | Планування проєкту | 3d | 2025-03-05 | 2025-03-07 | 25SS |  |
| 27 |  | Затвердження специфікації вимог і плану управління проєктом | 2d | 2025-03-13 | 2025-03-14 | 25 |  |
| 28 |  | Завершення аналізу вимог | 0d | 2025-03-14 | 2025-03-14 | 27 |  |

## Version 2 (saved 2025-06-12)

Note of the change: Click to see changes

Last finish 2025-06-30 → 2025-07-16 (+16d).

Changed:

| ID | Task | Start | Finish | Duration | Predecessors | Other |
| --- | --- | --- | --- | --- | --- | --- |
| 1 | **Проєкт** |  | 2025-06-30 → 2025-07-16 (+16d) | 86d → 98d |  | baseline finish 2025-06-30 → 2025-07-16 |
| 2 | Закриття проєкту | 2025-06-30 → 2025-07-16 (+16d) | 2025-06-30 → 2025-07-16 (+16d) |  |  | baseline start 2025-06-30 → 2025-07-16; baseline finish 2025-06-30 → 2025-07-16 |
| 3 | **Запуск і супровід** | 2025-06-19 → 2025-07-07 (+18d) | 2025-06-30 → 2025-07-16 (+16d) |  |  | baseline start 2025-06-19 → 2025-07-07; baseline finish 2025-06-30 → 2025-07-16 |
| 4 | Валідація та приймання системи замовником | 2025-06-30 → 2025-07-16 (+16d) | 2025-06-30 → 2025-07-16 (+16d) |  |  | baseline start 2025-06-30 → 2025-07-16; baseline finish 2025-06-30 → 2025-07-16 |
| 5 | Перевірка якості та усунення помилок | 2025-06-25 → 2025-07-11 (+16d) | 2025-06-27 → 2025-07-15 (+18d) |  |  | baseline start 2025-06-25 → 2025-07-11; baseline finish 2025-06-27 → 2025-07-15 |
| 6 | Підготовка платформи | 2025-06-23 → 2025-07-09 (+16d) | 2025-06-23 → 2025-07-09 (+16d) |  |  | baseline start 2025-06-23 → 2025-07-09; baseline finish 2025-06-23 → 2025-07-09 |
| 7 | Розгортання системи та наповнення контентом | 2025-06-24 → 2025-07-10 (+16d) | 2025-06-24 → 2025-07-10 (+16d) |  |  | baseline start 2025-06-24 → 2025-07-10; baseline finish 2025-06-24 → 2025-07-10 |
| 8 | Створення пакета передачі | 2025-06-19 → 2025-07-07 (+18d) | 2025-06-20 → 2025-07-08 (+18d) |  |  | baseline start 2025-06-19 → 2025-07-07; baseline finish 2025-06-20 → 2025-07-08 |
| 9 | **Розробка** | 2025-03-28 → 2025-04-09 (+12d) | 2025-06-13 → 2025-07-01 (+18d) | 56d → 60d |  | baseline start 2025-03-28 → 2025-04-09; baseline finish 2025-06-13 → 2025-07-01 |
| 10 | Інтеграція | 2025-03-28 → 2025-06-23 (+87d) | 2025-04-01 → 2025-06-23 (+83d) | 3d → 1d | none → 12 | baseline start 2025-03-28 → 2025-06-23; baseline finish 2025-04-01 → 2025-06-23 |
| 11 | Тестування | 2025-05-16 → 2025-06-12 (+27d) | 2025-06-04 → 2025-07-01 (+27d) |  | 14FF, 15, 16FS+3d → 15, 16, 14 | constraint none → start no earlier than 1970-01-01; resources QA engineer → QA engineer [30%]; Аналітик [50%]; Middle front-end developer [30%]; baseline start 2025-05-16 → 2025-06-12; baseline finish 2025-06-04 → 2025-07-01 |
| 12 | Доробка коду, виправлення помилок | 2025-06-05 → 2025-06-12 (+7d) | 2025-06-13 → 2025-06-20 (+7d) |  | 11 → 11SS | baseline start 2025-06-05 → 2025-06-12; baseline finish 2025-06-13 → 2025-06-20 |
| 13 | Завершення розробки | 2025-06-13 → 2025-07-01 (+18d) | 2025-06-13 → 2025-07-01 (+18d) |  | 12 → 11 | baseline start 2025-06-13 → 2025-07-01; baseline finish 2025-06-13 → 2025-07-01 |
| 14 | Back-end розробка | 2025-03-28 → 2025-04-09 (+12d) | 2025-05-30 → 2025-06-11 (+12d) |  | 15SS → none | baseline start 2025-03-28 → 2025-04-09; baseline finish 2025-05-30 → 2025-06-11 |
| 15 | Розробка бази даних | 2025-03-28 → 2025-04-09 (+12d) | 2025-04-01 → 2025-04-11 (+10d) |  | 16SS → none | baseline start 2025-03-28 → 2025-04-09; baseline finish 2025-04-01 → 2025-04-11 |
| 16 | Front-end розробка | 2025-03-28 → 2025-04-16 (+19d) | 2025-05-12 → 2025-05-30 (+18d) |  |  | constraint none → start no earlier than 2025-04-16; baseline start 2025-03-28 → 2025-04-16; baseline finish 2025-05-12 → 2025-05-30 |
| 17 | **Проєктування** | 2025-03-18 → 2025-03-28 (+10d) | 2025-03-26 → 2025-04-07 (+12d) |  |  | baseline start 2025-03-18 → 2025-03-28; baseline finish 2025-03-26 → 2025-04-07 |
| 18 | Завершення проєктування | 2025-03-26 → 2025-04-04 (+9d) | 2025-03-26 → 2025-04-04 (+9d) |  | 21, 20, 19 → 20 | baseline start 2025-03-26 → 2025-04-04; baseline finish 2025-03-26 → 2025-04-04 |
| 19 | Розробка дизайну сторінок за затвердженим концептом | 2025-03-18 → 2025-03-28 (+10d) | 2025-03-26 → 2025-04-07 (+12d) |  |  | baseline start 2025-03-18 → 2025-03-28; baseline finish 2025-03-26 → 2025-04-07 |
| 20 | Проєктування архітектури системи | 2025-03-18 → 2025-04-02 (+15d) | 2025-03-20 → 2025-04-04 (+15d) | 3d → 2.5d | 19SS → 21 | baseline start 2025-03-18 → 2025-04-02; baseline finish 2025-03-20 → 2025-04-04 |
| 21 | Проєктування БД | 2025-03-18 → 2025-03-28 (+10d) | 2025-03-20 → 2025-04-01 (+12d) |  | 20SS → 19SS | baseline start 2025-03-18 → 2025-03-28; baseline finish 2025-03-20 → 2025-04-01 |
| 22 | **Аналіз вимог** |  | 2025-03-14 → 2025-03-26 (+12d) | 10d → 18d |  | baseline finish 2025-03-14 → 2025-03-26 |
| 24 | Розробка й затвердження концепту дизайну | 2025-03-03 → 2025-03-10 (+7d) | 2025-03-04 → 2025-03-11 (+7d) |  | 23SS → 23 | resources Аналітик [80%]; Дизайнер → Аналітик [30%]; Дизайнер; baseline start 2025-03-03 → 2025-03-10; baseline finish 2025-03-04 → 2025-03-11 |
| 25 | Специфікація вимог | 2025-03-05 → 2025-03-12 (+7d) | 2025-03-12 → 2025-03-19 (+7d) |  |  | resources Менеджер проєкту [70%]; Аналітик → Менеджер проєкту [64.34%]; Аналітик [91.91%]; baseline start 2025-03-05 → 2025-03-12; baseline finish 2025-03-12 → 2025-03-19 |
| 26 | Планування проєкту | 2025-03-05 → 2025-03-20 (+15d) | 2025-03-07 → 2025-03-24 (+17d) |  | 25SS → 25 | baseline start 2025-03-05 → 2025-03-20; baseline finish 2025-03-07 → 2025-03-24 |
| 27 | Затвердження специфікації вимог і плану управління проєктом | 2025-03-13 → 2025-03-25 (+12d) | 2025-03-14 → 2025-03-26 (+12d) |  | 25 → 26 | baseline start 2025-03-13 → 2025-03-25; baseline finish 2025-03-14 → 2025-03-26 |
| 28 | Завершення аналізу вимог | 2025-03-14 → 2025-03-26 (+12d) | 2025-03-14 → 2025-03-26 (+12d) |  |  | baseline start 2025-03-14 → 2025-03-26; baseline finish 2025-03-14 → 2025-03-26 |
