# 32УП

How a schedule from ProjectLibre changed from version to version. A marks actual dates.

## Version 1 (saved 2025-06-12)

Note of the change: Click to see changes

| ID | WBS | Task | Duration | Start | Finish | Predecessors | Constraint |
| --- | --- | --- | --- | --- | --- | --- | --- |
| 1 | 1 | **Проєкт** | 88d | 2025-03-10 | 2025-07-10 |  |  |
| 2 |  | Закриття проєкту | 0d | 2025-07-10 | 2025-07-10 | 4 | finish no later than 2025-08-04 |
| 3 | 1.2 | **Запуск і супровід** | 6d | 2025-07-02 | 2025-07-10 |  | finish no later than 2025-08-01 |
| 4 |  | Валідація та приймання системи замовником | 1d | 2025-07-09 | 2025-07-10 | 5 |  |
| 5 |  | Перевірка якості та усунення помилок | 3d | 2025-07-04 | 2025-07-09 | 7 |  |
| 6 |  | Підготовка платформи | 1d | 2025-07-02 | 2025-07-03 | 8SS |  |
| 7 |  | Розгортання системи та наповнення контентом | 1d | 2025-07-03 | 2025-07-04 | 6 |  |
| 8 |  | Створення пакета передачі | 2d | 2025-07-02 | 2025-07-04 | 13 |  |
| 9 | 1.3 | **Розробка** | 60d | 2025-04-09 | 2025-07-02 |  | finish no later than 2025-07-28 |
| 10 |  | Інтеграція | 1d | 2025-06-26 | 2025-06-27 | 12SS+3d |  |
| 11 |  | Тестування | 14d | 2025-06-03 | 2025-06-23 | 16FF, 14FS-10d |  |
| 12 |  | Доробка коду, виправлення помилок | 7d | 2025-06-23 | 2025-07-02 | 11 |  |
| 13 |  | Завершення розробки | 0d | 2025-07-02 | 2025-07-02 | 12 |  |
| 14 |  | Back-end розробка | 46d | 2025-04-14 | 2025-06-17 | 15 |  |
| 15 |  | Розробка бази даних | 3d | 2025-04-09 | 2025-04-14 | 16SS |  |
| 16 |  | Front-end розробка | 32d | 2025-04-09 | 2025-05-23 | 18 | start no earlier than 2025-04-07 |
| 17 | 1.4 | **Проєктування** | 7d | 2025-03-31 | 2025-04-09 |  | finish no later than 2025-05-26 |
| 18 |  | Завершення проєктування | 0d | 2025-04-09 | 2025-04-09 | 19, 20, 21 |  |
| 19 |  | Розробка дизайну сторінок за затвердженим концептом | 7d | 2025-03-31 | 2025-04-09 | 28 |  |
| 20 |  | Проєктування архітектури системи | 3d | 2025-03-31 | 2025-04-03 | 19SS |  |
| 21 |  | Проєктування БД | 3d | 2025-03-31 | 2025-04-03 | 20SS |  |
| 22 | 1.5 | **Аналіз вимог** | 15d | 2025-03-10 | 2025-03-31 |  | start no earlier than 2025-03-03 |
| 23 |  | Аналіз предметної області та опитування замовника | 5d | 2025-03-10 | 2025-03-17 |  | start no earlier than 2025-03-10 |
| 24 |  | Розробка й затвердження концепту дизайну | 2d | 2025-03-17 | 2025-03-19 | 23 |  |
| 25 |  | Специфікація вимог | 6d | 2025-03-19 | 2025-03-27 | 24 |  |
| 26 |  | Планування проєкту | 3d | 2025-03-19 | 2025-03-24 | 25SS |  |
| 27 |  | Затвердження специфікації вимог і плану управління проєктом | 2d | 2025-03-27 | 2025-03-31 | 25, 26 |  |
| 28 |  | Завершення аналізу вимог | 0d | 2025-03-31 | 2025-03-31 | 27 |  |

## Version 2 (saved 2025-11-29)

Note of the change: add files from the laptop

Last finish stays 2025-07-10.

Changed:

| ID | Task | Other |
| --- | --- | --- |
| 15 | Розробка бази даних | resources Middle front-end developer → Middle back-end developer |
